# NSolver(1)

How a schedule from MS Project changed from version to version. A marks actual dates.

## Version 1 (saved 2015-04-13)

Note of the change: mat commit planifPROJECT.mpp

| ID | WBS | Task | Duration | Start | Finish | Predecessors | Complete |
| --- | --- | --- | --- | --- | --- | --- | --- |
| 1 | 1 | **Conduite de projet** | 66d | 2015-03-02 A | 2015-06-01 |  | 46% |
| 2 |  | Contrôle et suivi | 1d | 2015-03-02 A | 2015-03-02 A |  | 100% |
| 3 |  | Contrôle et suivi | 1d | 2015-03-09 A | 2015-03-09 A |  | 100% |
| 4 |  | Contrôle et suivi | 1d | 2015-03-16 A | 2015-03-16 A |  | 100% |
| 5 |  | Contrôle et suivi | 1d | 2015-03-23 A | 2015-03-23 A |  | 100% |
| 6 |  | Contrôle et suivi | 1d | 2015-03-30 A | 2015-03-30 A |  | 100% |
| 7 |  | Contrôle et suivi | 1d | 2015-04-13 A | 2015-04-13 A |  | 100% |
| 8 |  | Contrôle et suivi | 1d | 2015-04-20 A | 2015-04-20 |  |  |
| 9 |  | Contrôle et suivi | 1d | 2015-04-27 A | 2015-04-27 |  |  |
| 10 |  | Contrôle et suivi | 1d | 2015-05-04 A | 2015-05-04 |  |  |
| 11 |  | Contrôle et suivi | 1d | 2015-05-11 A | 2015-05-11 |  |  |
| 12 |  | Contrôle et suivi | 1d | 2015-05-18 A | 2015-05-18 |  |  |
| 13 |  | Contrôle et suivi | 1d | 2015-05-25 A | 2015-05-25 |  |  |
| 14 |  | Contrôle et suivi | 1d | 2015-06-01 A | 2015-06-01 |  |  |
| 15 | 2 | **Phase A -- Conception** | 35d | 2015-02-16 A | 2015-04-03 |  | 80% |
| 16 |  | Sujets | 1d | 2015-02-16 A | 2015-02-16 A |  | 100% |
| 17 |  | Cahier des charges | 13d | 2015-02-17 A | 2015-03-05 A | 16 | 100% |
| 18 | 2.3 | **Spécifications** | 31d | 2015-02-20 A | 2015-04-03 |  | 76% |
| 19 |  | Introduction | 4d | 2015-03-02 A | 2015-03-05 |  | 85% |
| 20 |  | Planification | 5d | 2015-03-02 A | 2015-03-06 A |  | 100% |
| 21 |  | Modèles mathématiques | 15d | 2015-02-20 A | 2015-03-12 |  | 80% |
| 22 |  | Diagrammes des cas d'utilisation | 2d | 2015-03-02 A | 2015-03-03 A |  | 100% |
| 23 |  | Cas d'utilisation, description textuelle | 4d | 2015-03-04 A | 2015-03-09 | 22 | 75% |
| 24 |  | Diagrammes des séquences | 4d | 2015-03-04 A | 2015-03-09 | 22 | 75% |
| 25 |  | Exigences fonctionnelles et non-fonctionnelles | 5d | 2015-03-06 A | 2015-03-12 |  | 75% |
| 26 |  | Maquettes + diagramme navigation | 20d | 2015-02-23 A | 2015-03-20 |  | 90% |
| 27 |  | Diagramme de classes | 5d | 2015-03-23 A | 2015-03-27 |  | 20% |
| 28 |  | Dynamique de l'application | 5d | 2015-03-30 A | 2015-04-03 | 27 | 10% |
| 29 |  | Architecture de déploiement | 2d | 2015-03-15 A | 2015-03-16 A |  | 100% |
| 30 |  | Choix des librairies externes | 3d | 2015-03-17 A | 2015-03-19 |  | 80% |
| 31 |  | Points chauds, tests fonctionnels | 6d | 2015-03-16 A | 2015-03-23 |  | 80% |
| 32 |  | Conclusion | 3d | 2015-03-24 A | 2015-03-26 | 31 | 80% |
| 33 | 3 | **Phase B -- Implémentation** | 34d | 2015-03-18 A | 2015-05-04 |  | 36% |
| 34 | 3.1 | **Codage du prototype** | 19d | 2015-03-18 A | 2015-04-13 A |  | 100% |
| 35 | 3.1.1 | **Partie Métier** | 16d | 2015-03-23 | 2015-04-13 A |  | 100% |
| 36 |  | Gauss | 8d | 2015-03-18 A | 2015-03-27 A |  | 100% |
| 37 |  | QR | 3d | 2015-04-09 A | 2015-04-13 A |  | 100% |
| 38 | 3.1.2 | **Partie Affichage** | 16d | 2015-03-23 | 2015-04-13 |  | 100% |
| 39 |  | Frames | 6d | 2015-03-31 A | 2015-04-07 A |  | 100% |
| 40 |  | Navigation | 5d | 2015-04-02 A | 2015-04-08 A |  | 100% |
| 41 |  | Contrôleur MVC | 1d | 2015-03-30 A | 2015-03-30 A |  | 100% |
| 42 | 3.2 | **Itération I (Accent architecture)** | 6d | 2015-04-13 A | 2015-04-20 | 34 | 17% |
| 43 | 3.2.1 | **Partie Métier** | 6d | 2015-04-13 A | 2015-04-20 |  | 42% |
| 44 |  | Gauss | 6d | 2015-04-13 A | 2015-04-20 |  | 50% |
| 45 |  | QR | 6d | 2015-04-13 A | 2015-04-20 |  | 33% |
| 46 | 3.2.2 | **Partie Affichage** | 6d | 2015-04-13 | 2015-04-20 |  |  |
| 47 |  | Frames | 6d | 2015-04-13 | 2015-04-20 |  |  |
| 48 |  | Navigation | 6d | 2015-04-13 | 2015-04-20 |  |  |
| 49 |  | Contrôleur MVC | 6d | 2015-04-13 | 2015-04-20 |  |  |
| 50 | 3.3 | **Itération II (accent codage pur)** | 6d | 2015-04-20 | 2015-04-27 | 42 |  |
| 51 |  | tests | 6d | 2015-04-20 | 2015-04-27 |  |  |
| 52 |  | codage pur | 6d | 2015-04-20 | 2015-04-27 |  |  |
| 53 | 3.4 | **Itération III (Tests et tunning)** | 6d | 2015-04-27 | 2015-05-04 | 50 |  |
| 54 |  | débogage et tests | 6d | 2015-04-27 | 2015-05-04 |  |  |
| 55 |  | tunning | 6d | 2015-04-27 | 2015-05-04 |  |  |
| 56 | 4 | **Phase C -- Valorisation** | 35d | 2015-04-13 | 2015-06-01 | 33 |  |
| 57 |  | Edition poster | 11d | 2015-05-04 | 2015-05-18 |  |  |
| 58 |  | Préparation présentation + speech | 16d | 2015-05-11 | 2015-06-01 |  |  |
| 59 |  | Edition soft plug'n play | 16d | 2015-05-11 | 2015-06-01 |  |  |
| 60 |  | Speech + demo+ produit fini, sources et exécutable, + poster, | 6d | 2015-06-01 | 2015-06-08 |  |  |
| 61 |  | + user guide «plug’n play» et retour client avec délivrable final | 6d | 2015-06-01 | 2015-06-08 |  |  |

## Version 2 (saved 2015-04-20)

Note of the change: Merge branch 'master' of https://github.com/bastou2316/p2-java

Last finish stays 2015-06-08. Complete tasks 16 → 21.

Changed:

| ID | Task | Start | Finish | Complete |
| --- | --- | --- | --- | --- |
| 33 | **Phase B -- Implémentation** |  |  | 36% → 69% |
| 42 | **Itération I (Accent architecture)** |  | 2015-04-20 A | 17% → 100% |
| 43 | **Partie Métier** |  | 2015-04-20 A | 42% → 100% |
| 44 | Gauss |  | 2015-04-20 A | 50% → 100% |
| 45 | QR |  | 2015-04-20 A | 33% → 100% |
| 46 | **Partie Affichage** | 2015-04-13 A | 2015-04-20 A | 0% → 100% |
| 47 | Frames | 2015-04-13 A | 2015-04-20 A | 0% → 100% |
| 48 | Navigation | 2015-04-13 A | 2015-04-20 A | 0% → 100% |
| 49 | Contrôleur MVC | 2015-04-13 A | 2015-04-20 A | 0% → 100% |
